How a schedule from MS Project changed from version to version. A marks actual dates.

## Version 1 (data date 2011-05-03, saved 2011-05-05, file PlanificaciónInicial.mpp)

| ID | WBS | Task | Duration | Start | Finish | Complete |
| --- | --- | --- | --- | --- | --- | --- |
| 1 | 1 | **Informe Preliminar** | 35d | 2011-03-15 A | 2011-05-02 | 54% |
| 2 |  | Definición del sistema a realizar | 3d | 2011-03-15 A | 2011-03-17 | 33% |
| 3 |  | Entrevista Institución | 2d | 2011-03-15 A | 2011-03-16 | 44% |
| 4 |  | Recopilación de Información | 16d | 2011-05-15 A | 2011-06-03 | 37% |
| 5 |  | Confección de Informe Preliminar | 20d | 2011-03-21 A | 2011-04-15 | 65% |
| 6 |  | Entrevista Institución | 1d | 2011-04-18 A | 2011-04-18 | 88% |
| 7 |  | Correcciones Informe Preliminar | 11d | 2011-04-18 A | 2011-05-02 | 53% |
| 8 |  | Planificación | 7d | 2011-04-25 A | 2011-05-03 | 70% |
| 9 | 2 | **Sprint 1** | 25d | 2011-05-02 | 2011-06-03 |  |
| 10 |  | Desarrollar Modelo de Negocio | 7d | 2011-05-02 | 2011-05-10 |  |
| 11 |  | Identificar Stakeholders | 1d | 2011-05-02 | 2011-05-02 |  |
| 12 |  | Realizar matriz de trazabilidad requierimientos - casos de uso | 4d | 2011-05-02 | 2011-05-05 |  |
| 13 |  | Realizar y priorizar product Backlog | 2d | 2011-05-02 | 2011-05-03 |  |
| 14 |  | Realizar diagrama de Caso de uso | 2d | 2011-05-02 | 2011-05-03 |  |
| 15 |  | Derivar user stories de Casos de Uso | 5d | 2011-05-02 | 2011-05-06 |  |
| 16 |  | Realizar Diagrama de Clases | 2d | 2011-05-02 | 2011-05-03 |  |
| 17 |  | Crear estructura de Datos | 5d | 2011-05-02 | 2011-05-06 |  |
| 18 |  | Modulo de Importacion de Datos | 15d | 2011-05-02 | 2011-05-20 |  |
| 19 |  | Preparacion de Primera Exposicion | 2d | 2011-05-02 | 2011-05-03 |  |
| 20 | 2.11 | **Plan de Actividades de Soporte** | 12d | 2011-05-10 | 2011-05-25 |  |
| 21 |  | Plan de Gestion de Riesgo | 3d | 2011-05-10 | 2011-05-12 |  |
| 22 |  | Plan de capacitacion | 3d | 2011-05-10 | 2011-05-12 |  |
| 23 |  | Plan de Aceptacion de Producto | 3d | 2011-05-10 | 2011-05-12 |  |
| 24 |  | Plan de Gestion de Configuracion | 3d | 2011-05-10 | 2011-05-12 |  |
| 25 |  | Gestion y Configuracion del Proyecto | 2d | 2011-05-02 | 2011-05-03 |  |
| 26 | 3 | **Sprint 2** | 25d | 2011-06-04 | 2011-07-07 |  |
| 27 |  | Modulo de Gestion de Informacion de Alumnos | 22d | 2011-06-04 | 2011-07-04 |  |
| 28 |  | Modulo web | 7d | 2011-06-04 | 2011-06-13 |  |
| 29 |  | Modulo de Gestión de Usuarios y Perfiles | 10d | 2011-06-04 | 2011-06-16 |  |
| 30 |  | Gestion y Configuracion del Proyecto | 2d | 2011-06-04 | 2011-06-06 |  |
| 32 | 4 | **Sprint 3** | 25d | 2011-07-08 | 2011-08-11 |  |
| 33 |  | Modulo Gestion de Agenda de Actividades | 10d | 2011-07-08 | 2011-07-21 |  |
| 34 |  | Modulo de Novedades Aulicas | 10d | 2011-07-08 | 2011-07-21 |  |
| 35 |  | Modulo de Reportes | 8d | 2011-07-08 | 2011-07-19 |  |
| 36 |  | Gestion y Configuracion del Proyecto | 2d | 2011-07-08 | 2011-07-11 |  |
| 37 | 5 | **Sprint 4** | 25d | 2011-08-12 | 2011-09-15 |  |
| 38 |  | Modulo de Gestion de Comunicación | 15d | 2011-08-12 | 2011-09-01 |  |
| 39 |  | Modulo de Gestion de Planificacion - Parte 1 | 15d | 2011-08-12 | 2011-09-01 |  |
| 40 |  | Gestion y Configuracion del Proyecto | 2d | 2011-08-12 | 2011-08-15 |  |
| 41 | 6 | **Sprint 5** | 30d | 2011-09-16 | 2011-10-27 |  |
| 42 |  | Tareas de Cierre del Proyecto | 7d | 2011-09-16 | 2011-09-26 |  |
| 43 |  | Manual de Proceso | 5d | 2011-09-16 | 2011-09-22 |  |
| 44 |  | Manual de Usuarios | 5d | 2011-09-16 | 2011-09-22 |  |
| 45 |  | Modulo de Gestion de Planificacion - Parte 2 | 30d | 2011-09-16 | 2011-10-27 |  |
| 46 |  | Gestion y Configuracion del Proyecto | 2d | 2011-09-16 | 2011-09-19 |  |
| 47 |  | Regularización | 1d | 2011-10-28 | 2011-10-28 |  |
| 49 | 8 | **Sprint 6** | 30d | 2012-03-01 | 2012-04-11 |  |
| 50 |  | Modulo de Encuesta | 30d | 2012-03-01 | 2012-04-11 |  |
| 51 |  | Gestion y Configuracion del Proyecto | 2d | 2012-03-01 | 2012-03-02 |  |
| 52 | 9 | **Sprint 7** | 30d | 2012-04-12 | 2012-05-23 |  |
| 53 |  | Modulo de Foro | 15d | 2012-04-12 | 2012-05-02 |  |
| 54 |  | Gestion y Configuracion del Proyecto | 2d | 2012-04-12 | 2012-04-13 |  |
| 55 | 10 | **Sprint 8** | 30d | 2012-05-24 | 2012-07-04 |  |
| 56 |  | Bug Fixing | 20d | 2012-05-24 | 2012-06-20 |  |
| 57 |  | Pruebas de Aceptacion | 20d | 2012-05-24 | 2012-06-20 |  |

## Version 2 (data date 2011-05-03, saved 2011-05-15, file PlanificaciónInicial.mpp)

Last finish stays 2012-07-04. Complete tasks 0 → 9.

Added:

| ID | Task | Duration | Start | Finish | Resources |
| --- | --- | --- | --- | --- | --- |
| 16 | Crear WBS | 7d | 2011-05-16 | 2011-05-24 | Belén Bazán |
| 24 | Plan del Proyecto | 3d | 2011-05-10 | 2011-05-12 | Martín Herrán |

Removed: 10 Desarrollar Modelo de Negocio

Changed:

| ID | Task | Start | Finish | Duration | Complete | Other |
| --- | --- | --- | --- | --- | --- | --- |
| 1 | **Informe Preliminar** |  | 2011-05-02 A | 35d → 34.88d | 54% → 100% |  |
| 2 | Definición del sistema a realizar |  | 2011-03-17 A |  | 33% → 100% |  |
| 3 | Entrevista Institución |  | 2011-03-16 A |  | 44% → 100% |  |
| 4 | Recopilación de Información | 2011-05-15 A → 2011-03-17 A (-59d) | 2011-06-03 → 2011-04-07 A (-57d) |  | 37% → 100% |  |
| 5 | Confección de Informe Preliminar |  | 2011-04-15 A |  | 65% → 100% |  |
| 6 | Entrevista Institución |  | 2011-04-18 A |  | 88% → 100% |  |
| 7 | Correcciones Informe Preliminar | 2011-04-18 A → 2011-04-12 A (-6d) | 2011-05-02 → 2011-04-26 A (-6d) | 11d → 10.88d | 53% → 100% |  |
| 8 | Planificación |  | 2011-05-03 → 2011-05-02 A (-1d) | 7d → 5.88d | 70% → 100% |  |
| 9 | **Sprint 1** | 2011-05-02 A |  |  | 0% → 22% |  |
| 10 | Identificar Roles y Perfiles | 2011-05-02 A | 2011-05-02 A |  | 0% → 100% | was named Identificar Stakeholders; resources none → Belén Bazán; Pablo Nicoliello |
| 11 | Realizar matriz de trazabilidad requierimientos - casos de uso | 2011-05-02 A |  |  | 0% → 95% | resources none → Martín Herrán |
| 12 | Realizar y priorizar product Backlog | 2011-05-02 A |  |  | 0% → 30% | resources none → Martín Herrán |
| 13 | Realizar diagrama de Caso de uso | 2011-05-02 → 2011-05-15 (+13d) | 2011-05-03 → 2011-05-16 (+13d) |  |  | resources none → Belén Bazán; Pablo Nicoliello |
| 14 | Derivar user stories de Casos de Uso | 2011-05-02 A |  |  | 0% → 30% | resources none → Martín Herrán |
| 15 | Realizar Diagrama de Clases |  |  |  |  | resources none → Pablo Nicoliello |
| 17 | Crear estructura de Datos |  |  |  |  | resources none → Laura Pastorino |
| 18 | Modulo de Importacion de Datos | 2011-05-02 → 2011-05-15 A (+13d) | 2011-05-20 → 2011-06-02 (+13d) |  | 0% → 5% | resources none → Laura Pastorino |
| 19 | Preparacion de Primera Exposicion | 2011-05-02 A | 2011-05-03 → 2011-05-10 A (+7d) | 2d → 6.88d | 0% → 100% |  |
| 20 | **Plan de Actividades de Soporte** |  | 2011-05-25 → 2011-05-30 (+5d) | 12d → 15d |  |  |
| 21 | Plan de Gestion de Riesgo |  |  |  |  | resources none → Martín Herrán |
| 22 | Plan de capacitacion |  |  |  |  | resources none → Martín Herrán |
| 23 | Plan de Aceptacion de Producto |  |  |  |  | resources none → Martín Herrán |
| 25 | Plan de Gestion de Configuracion |  |  |  |  | resources none → Martín Herrán |
| 26 | Gestion y Configuracion del Proyecto |  |  |  |  | resources none → Martín Herrán |

## Version 3 (data date 2011-05-03, saved 2011-05-16, file PlanificaciónInicial.mpp)

Last finish stays 2012-07-04.

Changed:

| ID | Task | Start | Finish | Duration | Complete | Other |
| --- | --- | --- | --- | --- | --- | --- |
| 9 | **Sprint 1** |  |  |  | 22% → 21% |  |
| 13 | Realizar diagrama de Caso de uso - Listado de Casos de Uso | 2011-05-15 A | 2011-05-16 → 2011-05-23 (+7d) | 2d → 7d | 0% → 11% | was named Realizar diagrama de Caso de uso |
| 16 | Crear WBS |  |  |  |  | resources Belén Bazán → Belén Bazán - Martin Herran |

## Version 4 (data date 2011-05-03, saved 2011-05-25, file PlanificaciónInicial.mpp)

Note of the change: Lau - Planificacion

Last finish stays 2012-07-04. Complete tasks 9 → 12.

Added:

| ID | Task | Duration | Start | Finish | Resources |
| --- | --- | --- | --- | --- | --- |
| 23 | Plan de Calidad | 3d | 2011-05-10 | 2011-05-12 | Belén Bazán |
| 25 | Plan de Metricas | 2d | 2011-05-10 A | 2011-05-11 A | Martín Herrán |
| 26 | Instructivo de Seteo de entorno | 1d | 2011-05-28 | 2011-05-28 | Laura Pastorino |
| 29 | Correcciones informe preliminar | 1d | 2011-05-29 | 2011-05-29 | Belén Bazán |

Removed: 23 Plan de Aceptacion de Producto

Changed:

| ID | Task | Start | Finish | Complete | Other |
| --- | --- | --- | --- | --- | --- |
| 9 | **Sprint 1** |  |  | 21% → 40% |  |
| 11 | Realizar matriz de trazabilidad requierimientos - casos de uso |  |  | 95% → 98% |  |
| 12 | Realizar y priorizar product Backlog |  |  | 30% → 50% |  |
| 13 | Realizar diagrama de Caso de uso - Listado de Casos de Uso |  |  | 11% → 95% |  |
| 14 | Derivar user stories de Casos de Uso |  |  | 30% → 50% |  |
| 19 | Preparacion de Primera Exposicion |  |  |  | resources none → Equipo |
| 20 | **Plan de Actividades de Soporte** | 2011-05-10 A |  | 0% → 44% |  |
| 21 | Plan de Gestion de Riesgo |  |  |  | resources Martín Herrán → Pablo Nicoliello |
| 22 | Plan de Capacitacion | 2011-05-10 A | 2011-05-12 A | 0% → 100% | was named Plan de capacitacion; resources Martín Herrán → Laura Pastorino |
| 27 | Plan de Gestion de Configuracion | 2011-05-10 A | 2011-05-12 A | 0% → 100% | resources Martín Herrán → Pablo Nicoliello |

## Version 5 (data date 2011-05-03, saved 2011-05-26, file PlanificaciónInicial.mpp)

Last finish stays 2012-07-04. Complete tasks 12 → 15.

Added:

| ID | Task | Duration | Start | Finish | Resources |
| --- | --- | --- | --- | --- | --- |
| 29 | Revision Formal de entregables | 1d | 2011-05-29 | 2011-05-29 | Martín Herrán; Belén Bazán; Laura Pastorino; Pablo Nicoliello |

Changed:

| ID | Task | Start | Finish | Complete | Other |
| --- | --- | --- | --- | --- | --- |
| 9 | **Sprint 1** |  |  | 40% → 46% |  |
| 11 | Realizar matriz de trazabilidad requierimientos - casos de uso |  |  | 98% → 99% |  |
| 12 | Realizar y priorizar product Backlog |  | 2011-05-03 A | 50% → 100% |  |
| 13 | Realizar diagrama de Caso de uso - Listado de Casos de Uso |  | 2011-05-23 A | 95% → 100% |  |
| 14 | Derivar user stories de Casos de Uso |  | 2011-05-06 A | 50% → 100% |  |
| 15 | Realizar Diagrama de Clases | 2011-05-02 A |  | 0% → 10% |  |
| 16 | Crear WBS |  |  |  | resources Belén Bazán - Martin Herran → Belén Bazán |
| 17 | Crear estructura de Datos | 2011-05-02 A |  | 0% → 5% |  |

## Version 6 (data date 2011-05-03, saved 2011-05-30, file PlanificaciónInicial.mpp)

Note of the change: Lau - Update PlanificaciónInicial.mpp

Last finish stays 2012-07-04. Complete tasks 15 → 20.

Changed:

| ID | Task | Start | Finish | Complete | Other |
| --- | --- | --- | --- | --- | --- |
| 9 | **Sprint 1** |  |  | 46% → 66% |  |
| 11 | Realizar matriz de trazabilidad requierimientos - casos de uso |  | 2011-05-05 A | 99% → 100% |  |
| 15 | Realizar Diagrama de Clases |  |  | 10% → 94% |  |
| 16 | Crear WBS | 2011-05-16 A |  | 0% → 30% | resources Belén Bazán → Belén Bazán; Martín Herrán |
| 17 | Crear estructura de Datos |  |  | 5% → 38% |  |
| 18 | Modulo de Importacion de Datos |  |  | 5% → 10% |  |
| 20 | **Plan de Actividades de Soporte** |  |  | 44% → 77% |  |
| 21 | Plan de Gestion de Riesgo | 2011-05-10 A |  | 0% → 40% |  |
| 23 | Plan de Calidad | 2011-05-10 A |  | 0% → 70% |  |
| 24 | Plan del Proyecto | 2011-05-10 A |  | 0% → 50% |  |
| 26 | Instructivo de Seteo de entorno | 2011-05-28 A | 2011-05-28 A | 0% → 100% |  |
| 28 | Gestion y Configuracion del Proyecto | 2011-05-02 A | 2011-05-03 A | 0% → 100% |  |
| 29 | Revision Formal de entregables | 2011-05-29 A | 2011-05-29 A | 0% → 100% |  |
| 30 | Correcciones informe preliminar | 2011-05-29 A | 2011-05-29 A | 0% → 100% | resources Belén Bazán → Pablo Nicoliello |

## Version 7 (data date 2011-05-03, saved 2011-06-26, file BLMP_Planificación Inicial.mpp)

Note of the change: Actualización de los avances de los sprints 1 y 2. El FBS pasó a ser responsabilidad de Control y Gestión de Proyecto de cada uno de los Sprints.

Last finish stays 2012-07-04. Complete tasks 20 → 25.

Added:

| ID | Task | Duration | Start | Finish |
| --- | --- | --- | --- | --- |
| 34 | Preparacion de Segunda Exposicion | 3d | 2011-06-17 A | 2011-06-21 A |

Removed: 16 Crear WBS

Changed:

| ID | Task | Start | Finish | Duration | Complete |
| --- | --- | --- | --- | --- | --- |
| 9 | **Sprint 1** |  |  |  | 66% → 95% |
| 15 | Realizar Diagrama de Clases |  | 2011-05-03 A |  | 94% → 100% |
| 16 | Crear estructura de Datos |  |  |  | 38% → 99% |
| 17 | Modulo de Importacion de Datos |  |  |  | 10% → 75% |
| 19 | **Plan de Actividades de Soporte** |  |  |  | 77% → 100% |
| 20 | Plan de Gestion de Riesgo |  | 2011-05-12 A |  | 40% → 100% |
| 22 | Plan de Calidad |  | 2011-05-12 A |  | 70% → 100% |
| 23 | Plan del Proyecto |  | 2011-05-12 A |  | 50% → 100% |
| 30 | **Sprint 2** | 2011-06-04 A |  |  | 0% → 19% |
| 32 | Modulo web | 2011-06-04 A | 2011-06-13 → 2011-06-09 (-4d) | 7d → 5d | 0% → 20% |
| 33 | Modulo de Gestión de Usuarios y Perfiles | 2011-06-04 A | 2011-06-16 → 2011-06-15 (-1d) | 10d → 9d | 0% → 30% |
| 35 | Gestion y Configuracion del Proyecto | 2011-06-04 A |  |  | 0% → 50% |

## Version 8 (data date 2011-05-03, saved 2011-08-16, file BLMP_Planificación Inicial.mpp)

Last finish stays 2012-07-04.

Removed: 38 Modulo de Novedades Aulicas

Changed:

| ID | Task | Start | Finish | Duration | Complete |
| --- | --- | --- | --- | --- | --- |
| 36 | **Sprint 3** | 2011-07-08 A |  |  | 0% → 57% |
| 37 | Modulo Gestion de Agenda de Actividades | 2011-07-08 A | 2011-07-21 → 2011-07-26 (+5d) | 10d → 12.88d | 0% → 50% |
| 38 | Modulo de Reportes | 2011-07-08 → 2011-07-27 A (+19d) | 2011-07-19 → 2011-08-11 (+23d) | 8d → 12d | 0% → 60% |
| 39 | Gestion y Configuracion del Proyecto | 2011-07-08 → 2011-08-09 A (+32d) | 2011-07-11 → 2011-08-10 (+30d) |  | 0% → 90% |
| 41 | Modulo de Gestion de Comunicación | 2011-08-12 → 2011-08-24 (+12d) | 2011-09-01 → 2011-09-13 (+12d) |  |  |
| 42 | Modulo de Gestion de Planificacion - Parte 1 | 2011-08-12 → 2011-08-28 (+16d) | 2011-09-01 → 2011-09-15 (+14d) |  |  |
| 43 | Gestion y Configuracion del Proyecto | 2011-08-12 → 2011-09-13 (+32d) | 2011-08-15 → 2011-09-14 (+30d) |  |  |
